WBS,Name,Type,Start Date,End Date,Color
1,Smart Fridge Development,project,2027-01-01,2029-01-01,
1.1,Project Initiation and Market Research,group,2027-01-01,2027-02-18,
1.1.1,Project kickoff and governance,task,2027-01-01,2027-01-08,blue1
1.1.2,Market and competitor analysis,task,2027-01-05,2027-01-18,blue1
1.1.3,Customer needs and market positioning,task,2027-01-15,2027-01-28,blue1
1.1.4,Technical and economic feasibility,task,2027-01-22,2027-02-05,blue1
1.1.5,Initial risk assessment,task,2027-01-29,2027-02-18,blue1
1.2,Product Requirements and System Architecture,group,2027-01-20,2027-04-05,
1.2.1,Functional requirements,task,2027-01-20,2027-02-09,green3
1.2.2,Technical specifications,task,2027-02-01,2027-02-20,green3
1.2.3,System architecture,task,2027-02-15,2027-03-08,green3
1.2.4,Hardware/software interface definition,task,2027-03-01,2027-03-21,green3
1.2.5,Cost and performance targets,task,2027-02-15,2027-03-07,green3
1.2.6,Requirements approval,task,2027-03-22,2027-04-05,green3
1.3,Hardware and Mechanical Engineering,group,2027-03-01,2027-10-20,
1.3.1,Refrigeration system engineering,task,2027-03-01,2027-05-30,orange1
1.3.2,Cabinet and insulation design,task,2027-05-15,2027-07-30,orange1
1.3.3,Electrical and electronic architecture,task,2027-05-15,2027-07-30,orange1
1.3.4,Sensors and component selection,task,2027-07-01,2027-08-15,orange1
1.3.5,CAD design and engineering reviews,task,2027-07-15,2027-10-05,orange1
1.3.6,Design freeze,task,2027-10-06,2027-10-20,orange1
1.4,"Software, Embedded Systems and IoT",group,2027-03-01,2028-01-15,
1.4.1,Embedded software architecture,task,2027-03-01,2027-05-30,yellow1
1.4.2,Firmware development,task,2027-06-01,2027-10-01,yellow1
1.4.3,Sensor data acquisition,task,2027-07-01,2027-09-15,yellow1
1.4.4,IoT and connectivity development,task,2027-07-15,2027-12-01,yellow1
1.4.5,Mobile and cloud integration,task,2027-10-01,2027-12-15,yellow1
1.4.6,Initial smart functionalities,task,2027-11-01,2027-12-15,yellow1
1.4.7,Hardware/software integration,task,2027-12-16,2028-01-15,yellow1
1.5,"Industrialization, Procurement and Tooling",group,2027-05-01,2027-12-20,
1.5.1,Supplier identification and selection,task,2027-05-01,2027-07-15,purple1
1.5.2,Component sourcing,task,2027-07-01,2027-09-15,purple1
1.5.3,Supplier qualification,task,2027-09-01,2027-10-15,purple1
1.5.4,Manufacturing process design,task,2027-09-15,2027-11-15,purple1
1.5.5,Tooling preparation,task,2027-11-01,2027-12-15,purple1
1.5.6,Production cost analysis,task,2027-12-01,2027-12-20,purple1
1.6,Wave 1 – Core Prototype Development,group,2027-09-01,2028-02-05,
1.6.1,Prototype component procurement,task,2027-09-01,2027-11-15,red1
1.6.2,Mechanical and electrical assembly,task,2027-11-08,2027-12-31,red1
1.6.3,Refrigeration system integration,task,2027-12-20,2028-01-10,red1
1.6.4,Embedded software integration,task,2028-01-05,2028-01-20,red1
1.6.5,Core IoT functionality integration,task,2028-01-15,2028-01-25,red1
1.6.6,First integrated prototype,task,2028-01-26,2028-01-27,red1
1.6.7,Prototype review and approval,task,2028-01-28,2028-02-05,red1
1.7,Testing and Quality Assurance,group,2028-02-06,2028-05-30,
1.7.1,Functional testing,task,2028-02-06,2028-03-25,blue3
1.7.2,Refrigeration performance testing,task,2028-03-15,2028-04-15,blue3
1.7.3,Energy-efficiency testing,task,2028-03-29,2028-04-21,blue3
1.7.4,Reliability and durability testing,task,2028-04-15,2028-05-05,blue3
1.7.5,Electrical and safety testing,task,2028-04-25,2028-05-05,blue3
1.7.6,Connectivity testing,task,2028-05-01,2028-05-10,blue3
1.7.7,Defect correction and retesting,task,2028-05-06,2028-05-30,blue3
1.8,Wave 2 – Advanced Smart Features,group,2028-02-06,2028-06-20,
1.8.1,Smart screen integration,task,2028-02-06,2028-04-05,magenta1
1.8.2,AI feature development,task,2028-03-15,2028-05-05,magenta1
1.8.3,Advanced software functionalities,task,2028-04-15,2028-05-20,magenta1
1.8.4,User interface development,task,2028-03-01,2028-04-20,magenta1
1.8.5,Integration with Wave 1 architecture,task,2028-05-21,2028-05-25,magenta1
1.8.6,System optimization,task,2028-05-22,2028-06-05,magenta1
1.8.7,Advanced feature validation,task,2028-06-01,2028-06-20,magenta1
1.9,"Final Validation, Certification and Market Launch",group,2028-09-01,2029-01-01,
1.9.1,Final system integration,task,2028-09-01,2028-09-21,green1
1.9.2,Complete product validation,task,2028-09-15,2028-10-25,green1
1.9.3,Regulatory compliance and certification,task,2028-10-01,2028-10-20,green1
1.9.4,Final quality approval,task,2028-10-21,2028-10-30,green1
1.9.5,Production readiness review,task,2028-11-01,2028-11-12,green1
1.9.6,Launch preparation,task,2028-11-06,2028-12-26,green1
1.9.7,Commercial launch and project closure,task,2028-12-28,2029-01-01,green1
